WBS_ID,Task_Name,Category,Assigned_To,Start_Date,End_Date,Duration_Days,Dependencies,Status,Percent_Complete,Priority,Estimated_Cost
GX-001,Planning & Procurement Phase,Planning & Procurement,Project Lead,2027-03-01,2027-05-09,70,,Completed,100,High,0.0
GX-002,Kick-off Meeting & Stakeholder Alignment,Planning & Procurement,Project Lead,2027-03-01,2027-03-05,5,,Completed,100,High,0.0
GX-003,Facility Site Assessment,Planning & Procurement,Facilities Team,2027-03-06,2027-03-19,14,1.1,Completed,100,High,9205.5
GX-004,Compute Requirements Analysis,Planning & Procurement,Research Software Engineer,2027-03-06,2027-03-21,16,1.1,Completed,100,High,0.0
GX-005,Vendor RFP Development & Issuance,Planning & Procurement,Project Lead,2027-03-22,2027-04-04,14,1.2;1.3,Completed,100,High,2166.0
GX-006,Vendor Evaluation & Selection,Planning & Procurement,Project Lead,2027-04-05,2027-04-18,14,1.4,Completed,100,High,0.0
GX-007,Contract Negotiation & PO Issuance,Planning & Procurement,Project Lead,2027-04-19,2027-05-02,14,1.5,Completed,100,High,3790.5
GX-008,Budget Approval & Funding Verification,Planning & Procurement,Project Lead,2027-04-19,2027-05-09,21,1.5,Completed,100,High,0.0
GX-009,Infrastructure Preparation Phase,Infrastructure Preparation,Facilities Team,2027-05-01,2027-07-11,72,,In Progress,62,High,0.0
GX-010,Electrical Capacity Upgrade (200 kW),Infrastructure Preparation,Facilities Team,2027-05-01,2027-06-13,44,1.6,In Progress,80,High,135375.0
GX-011,CRAC / In-Row Cooling Installation,Infrastructure Preparation,Facilities Team,2027-05-15,2027-06-27,44,1.6,In Progress,65,High,102885.0
GX-012,Raised-Floor & Hot-Aisle Containment,Infrastructure Preparation,Facilities Team,2027-06-01,2027-06-27,27,2.1,In Progress,40,Medium,48735.0
GX-013,Fire Suppression System Update,Infrastructure Preparation,Facilities Team,2027-06-14,2027-06-27,14,2.1,Not Started,0,High,19494.0
GX-014,Network Cabling (Fiber & Copper),Infrastructure Preparation,Network Engineer,2027-06-14,2027-07-04,21,2.3,Not Started,0,High,34656.0
GX-015,Building Management System Integration,Infrastructure Preparation,Facilities Team,2027-06-28,2027-07-11,14,2.2;2.4,Not Started,0,Medium,12996.0
GX-016,Physical Security & Access Control,Infrastructure Preparation,Security Officer,2027-06-28,2027-07-11,14,2.3,Not Started,0,Medium,8664.0
GX-017,Hardware Deployment Phase,Hardware Deployment,Vendor Team,2027-07-07,2027-08-22,47,,Not Started,0,High,0.0
GX-018,Equipment Receiving & Inventory,Hardware Deployment,Systems Admin,2027-07-07,2027-07-11,5,1.6;2.5,Not Started,0,High,0.0
GX-019,Rack Mounting & PDU Wiring,Hardware Deployment,Vendor Team,2027-07-12,2027-07-18,7,3.1,Not Started,0,High,0.0
GX-020,DGX H100 Node Installation (×4),Hardware Deployment,Vendor Team,2027-07-19,2027-07-30,12,3.2,Not Started,0,High,0.0
GX-021,Dell R760xa Node Installation (×8),Hardware Deployment,Vendor Team,2027-07-19,2027-08-01,14,3.2,Not Started,0,High,0.0
GX-022,InfiniBand Fabric Deployment & Cabling,Hardware Deployment,Network Engineer,2027-07-26,2027-08-08,14,3.3;3.4,Not Started,0,High,0.0
GX-023,Ethernet Network Configuration,Hardware Deployment,Network Engineer,2027-07-26,2027-08-08,14,3.2,Not Started,0,Medium,0.0
GX-024,Storage System Installation & Zoning,Hardware Deployment,Systems Admin,2027-08-02,2027-08-15,14,3.5,Not Started,0,High,0.0
GX-025,UPS Commissioning & Power-On Test,Hardware Deployment,Facilities Team,2027-08-09,2027-08-22,14,3.7,Not Started,0,High,0.0
GX-026,Software & Configuration Phase,Software & Configuration,Systems Admin,2027-08-18,2027-09-26,40,,Not Started,0,High,0.0
GX-027,Base OS & Firmware Deployment,Software & Configuration,Systems Admin,2027-08-18,2027-08-29,12,3.8,Not Started,0,High,0.0
GX-028,Slurm Scheduler Installation & Tuning,Software & Configuration,Systems Admin,2027-08-25,2027-09-05,12,4.1,Not Started,0,High,0.0
GX-029,"NVIDIA Driver, CUDA & cuDNN Stack",Software & Configuration,Research Software Engineer,2027-08-25,2027-09-05,12,4.1,Not Started,0,High,0.0
GX-030,"ML Framework Installation (PyTorch, TF, JAX)",Software & Configuration,Research Software Engineer,2027-09-01,2027-09-12,12,4.3,Not Started,0,High,0.0
GX-031,Parallel File System & Quota Setup,Software & Configuration,Systems Admin,2027-09-01,2027-09-12,12,3.7;4.1,Not Started,0,High,0.0
GX-032,Security Hardening & Compliance Config,Software & Configuration,Security Officer,2027-09-08,2027-09-19,12,4.2,Not Started,0,High,0.0
GX-033,Monitoring & Alerting (Prometheus/Grafana),Software & Configuration,Systems Admin,2027-09-15,2027-09-26,12,4.2;4.5,Not Started,0,Medium,0.0
GX-034,Testing & Validation Phase,Testing & Validation,Systems Admin,2027-09-22,2027-10-24,33,,Not Started,0,High,0.0
GX-035,Hardware Burn-In & Stress Testing,Testing & Validation,Vendor Team,2027-09-22,2027-10-03,12,4.3,Not Started,0,High,0.0
GX-036,InfiniBand Fabric Validation (ib_write_bw),Testing & Validation,Network Engineer,2027-09-29,2027-10-06,8,5.1,Not Started,0,High,0.0
GX-037,HPL / Genomics ComputeG Benchmark Suite,Testing & Validation,Research Software Engineer,2027-10-01,2027-10-10,10,5.1,Not Started,0,High,0.0
GX-038,"Multi-Node ML Training Test (ResNet-50, GPT-2)",Testing & Validation,Research Software Engineer,2027-10-06,2027-10-17,12,5.2;5.3,Not Started,0,High,0.0
GX-039,Storage Performance Benchmark (IOR/MDTest),Testing & Validation,Systems Admin,2027-10-06,2027-10-13,8,5.1;4.5,Not Started,0,Medium,0.0
GX-040,User Acceptance Testing (Pilot Research Groups),Testing & Validation,Research Software Engineer,2027-10-13,2027-10-24,12,5.4;5.5,Not Started,0,High,0.0
GX-041,Operations & Training Phase,Operations & Training,Project Lead,2027-10-20,2027-11-07,19,,Not Started,0,Medium,0.0
GX-042,System Administration Documentation,Operations & Training,Systems Admin,2027-10-20,2027-10-31,12,5.4,Not Started,0,Medium,0.0
GX-043,Researcher Onboarding & Training Workshops,Operations & Training,Research Software Engineer,2027-10-27,2027-11-07,12,5.6,Not Started,0,High,5415.0
GX-044,Operational Handoff to IT Operations,Operations & Training,Project Lead,2027-10-31,2027-11-07,8,6.1;6.2,Not Started,0,High,0.0
GX-045,Post-Deployment Review & Lessons Learned,Operations & Training,Project Lead,2027-11-03,2027-11-07,5,6.3,Not Started,0,Low,0.0
